# HLS Development

How a schedule from ProjectLibre changed from version to version. A marks actual dates.

## Version 1 (saved 2021-03-06, file HLS Development.pod.xml.pod)

Note of the change: update version to TF

| ID | WBS | Task | Duration | Start | Finish | Predecessors |
| --- | --- | --- | --- | --- | --- | --- |
| 1 | 1 | **Этап 1. Создание проекта/Авторизация/Чат** | 12.75d? | 2021-01-01 | 2021-01-19 |  |
| 2 |  | Создание и настройка проекта | 0.75d | 2021-01-01 | 2021-01-01 |  |
| 3 |  | Навигация | 1.5d | 2021-01-01 | 2021-01-05 | 2 |
| 4 |  | Верстка базовых компонентов | 1.5d | 2021-01-05 | 2021-01-06 | 3 |
| 5 |  | Слайдер приветствие | 0.75d | 2021-01-06 | 2021-01-07 | 4 |
| 6 |  | Авторизация | 0.75d | 2021-01-07 | 2021-01-08 | 5 |
| 7 |  | Подтверждение кода | 0.75d | 2021-01-08 | 2021-01-08 | 6 |
| 8 |  | Движок чата | 1.5d | 2021-01-11 | 2021-01-12 | 7 |
| 9 |  | Опрос приветствие | 1.12d | 2021-01-12 | 2021-01-13 | 8 |
| 10 |  | Опрос по питанию | 1.12d | 2021-01-13 | 2021-01-14 | 9 |
| 11 |  | Опрос по образу жизни | 0.75d | 2021-01-14 | 2021-01-15 | 10 |
| 12 |  | Опрос по состоянию здоровья | 2.25d | 2021-01-15 | 2021-01-19 | 11 |
| 14 | 1.12 | **Этап 2. Каталог продуктов** | 7.88d? | 2021-01-01 | 2021-01-12 |  |
| 15 |  | Список категорий | 1d? | 2021-01-01 | 2021-01-01 |  |
| 16 |  | Список подкатегорий | 1d? | 2021-01-01 | 2021-01-01 |  |
| 17 |  | Отображение продукта | 1d? | 2021-01-01 | 2021-01-01 |  |
| 18 |  | Дашбоард (верстка) | 1d? | 2021-01-01 | 2021-01-01 |  |
| 19 |  | Фильтрация каталога | 1d? | 2021-01-01 | 2021-01-01 |  |
| 20 |  | Поиск по каталогу | 1d? | 2021-01-01 | 2021-01-01 |  |
| 22 | 1.12.7 | **Этап 3. Дашборд/профиль** | 7.88d? | 2021-01-01 | 2021-01-12 |  |
| 23 |  | Дашбоард (подсадка) | 1d? | 2021-01-01 | 2021-01-01 |  |
| 24 |  | Компонент просмотра конента (каталог знаний) | 1d? | 2021-01-01 | 2021-01-01 |  |
| 25 |  | - Список статей | 1d? | 2021-01-01 | 2021-01-01 |  |
| 26 |  | - Компонент типа новость | 1d? | 2021-01-01 | 2021-01-01 |  |
| 27 |  | - Компонент типа сторис (упрощен объект) | 1d? | 2021-01-01 | 2021-01-01 |  |
| 28 |  | - Компонент типа видео | 1d? | 2021-01-01 | 2021-01-01 |  |
| 29 |  | Результаты анкетирования/профиль 12 | 1d? | 2021-01-01 | 2021-01-01 |  |
| 30 |  | - Верстка/подсадка | 1d? | 2021-01-01 | 2021-01-01 |  |
| 31 |  | - Макроцикл | 1d? | 2021-01-01 | 2021-01-01 |  |
| 32 |  | - Мезоцикл | 1d? | 2021-01-01 | 2021-01-01 |  |
| 33 |  | - График компенсации | 1d? | 2021-01-01 | 2021-01-01 |  |
| 34 |  | - Редактирование | 1d? | 2021-01-01 | 2021-01-01 |  |
| 36 | 1.12.7.13 | **Этап 4. Режим дня/Движение** | 7.88d? | 2021-01-01 | 2021-01-12 |  |
| 37 |  | Режим дня (ночь) | 1d? | 2021-01-01 | 2021-01-01 |  |
| 38 |  | Режим дня (день) | 1d? | 2021-01-01 | 2021-01-01 |  |
| 39 |  | Добавить данные (отметьте тренировку на часах) | 1d? | 2021-01-01 | 2021-01-01 |  |
| 40 |  | Добавить тренировку поиск | 1d? | 2021-01-01 | 2021-01-01 |  |
| 41 |  | Добавить тренировку (каталог) | 1d? | 2021-01-01 | 2021-01-01 |  |
| 42 |  | Резутаты после добавления | 1d? | 2021-01-01 | 2021-01-01 |  |
| 43 |  | Каталог тренировок таб | 1d? | 2021-01-01 | 2021-01-01 |  |
| 44 |  | Просмотр тренировки | 1d? | 2021-01-01 | 2021-01-01 |  |
| 46 | 1.12.7.13.9 | **Этап 5. Движение 2** | 7.88d? | 2021-01-01 | 2021-01-12 |  |
| 47 |  | Начать тренировку | 1d? | 2021-01-01 | 2021-01-01 |  |
| 48 |  | Пульсовый график | 1d? | 2021-01-01 | 2021-01-01 |  |
| 49 |  | Пульс по зонам интенсивности (считывание пульса) | 1d? | 2021-01-01 | 2021-01-01 |  |
| 50 |  | Экран групп мышц | 1d? | 2021-01-01 | 2021-01-01 |  |
| 51 |  | Apple Health/Google Fit (health) | 1d? | 2021-01-01 | 2021-01-01 |  |
| 52 |  | Интеграция с кардиомониторами | 1d? | 2021-01-01 | 2021-01-01 |  |
| 53 |  | Уведомления Push | 1d? | 2021-01-01 | 2021-01-01 |  |
| 54 |  | Взаимодействие | 1d? | 2021-01-01 | 2021-01-01 |  |
| 55 |  | Доп. правки | 1d? | 2021-01-01 | 2021-01-01 |  |
| 57 | 1.12.7.13.9.10 | **Этап 6. Полезные инструменты/Каталог знаний** | 7.88d? | 2021-01-01 | 2021-01-12 |  |
| 58 |  | Полезные инструменты | 1d? | 2021-01-01 | 2021-01-01 |  |
| 59 |  | Биоритмы | 1d? | 2021-01-01 | 2021-01-01 |  |
| 60 |  | Умный будильник | 1d? | 2021-01-01 | 2021-01-01 |  |
| 61 |  | Проверка качества список | 1d? | 2021-01-01 | 2021-01-01 |  |
| 62 |  | Проверка качества просмотр | 1d? | 2021-01-01 | 2021-01-01 |  |
| 63 |  | Проверка качества аналоги | 1d? | 2021-01-01 | 2021-01-01 |  |
| 64 |  | Курение | 1d? | 2021-01-01 | 2021-01-01 |  |
| 65 |  | Таблица пищевых добавок (поиск) | 1d? | 2021-01-01 | 2021-01-01 |  |
| 66 |  | Просмотр добавки | 1d? | 2021-01-01 | 2021-01-01 |  |
| 67 |  | Локальные напоминания | 1d? | 2021-01-01 | 2021-01-01 |  |
| 68 |  | Список уведомлений | 1d? | 2021-01-01 | 2021-01-01 |  |
| 69 |  | Список статей по категориям таб | 1d? | 2021-01-01 | 2021-01-01 |  |
| 70 |  | Создать пост для сторис | 1d? | 2021-01-01 | 2021-01-01 |  |
| 72 | 1.12.7.13.9.10.14 | **Этап 7. Функционал профиля/Питание** | 7.88d? | 2021-01-01 | 2021-01-12 |  |
| 73 |  | Компонент секций со шкалами и пороговыми значениями (нутриенты продукта) | 1d? | 2021-01-01 | 2021-01-01 |  |
| 74 |  | Прием пищи карточка | 1d? | 2021-01-01 | 2021-01-01 |  |
| 75 |  | Прием пищи добавление | 1d? | 2021-01-01 | 2021-01-01 |  |
| 76 |  | Смена заставки (?) | 1d? | 2021-01-01 | 2021-01-01 |  |

| ID | WBS | Task | Duration | Start | Finish | Predecessors |
| --- | --- | --- | --- | --- | --- | --- |
| 77 |  | Результаты тестирования (?) | 1d? | 2021-01-01 | 2021-01-01 |  |
| 78 |  | Избранное (?) | 1d? | 2021-01-01 | 2021-01-01 |  |
| 79 |  | Настройки 14 | 1d? | 2021-01-01 | 2021-01-01 |  |
| 80 |  | Мои замеры, просмотр прогресса ИМТ, стептеста | 1d? | 2021-01-01 | 2021-01-01 |  |
| 81 |  | Вызов повторного тестирования 1 раз в 2 месяца | 1d? | 2021-01-01 | 2021-01-01 |  |
| 82 |  | Компонент календаря | 1d? | 2021-01-01 | 2021-01-01 |  |
| 84 | 1.12.7.13.9.10.14.11 | **Этап 8. Статистика (Банк здоровья)** | 7.88d | 2021-01-01 | 2021-01-12 |  |
| 85 |  | Компонент выбора периода или даты для статистики | 0.75d | 2021-01-01 | 2021-01-01 |  |
| 86 |  | Радиальная шкала недосыпа (вместо трех разных) | 0.75d | 2021-01-01 | 2021-01-04 | 85 |
| 87 |  | Радиальная шкала общая | 0.75d | 2021-01-04 | 2021-01-05 | 86 |
| 88 |  | Экран статистики с таб навигацией 13 | 0.75d | 2021-01-05 | 2021-01-05 | 87 |
| 89 |  | Таб статистика сон (-радиальная шкала) | 0.75d | 2021-01-06 | 2021-01-06 | 88 |
| 90 |  | Таб статистика питание (-радиальная шкала, -горизонтальные шкалы, +употребление воды) | 1.12d | 2021-01-06 | 2021-01-07 | 89 |
| 91 |  | Таб статистика активность (-радиальная шкала) | 0.75d | 2021-01-07 | 2021-01-08 | 90 |
| 92 |  | Статистика сон период (-календарь, сон за неделю/достаточность сна за неделю) | 0.75d | 2021-01-08 | 2021-01-11 | 91 |
| 93 |  | Статистика питание период (-календарь) | 0.75d | 2021-01-11 | 2021-01-12 | 92 |
| 94 |  | Статистика активность период (-календарь) | 0.75d | 2021-01-12 | 2021-01-12 | 93 |

## Version 2 (saved 2021-03-06, file HLS Development.mpp)

Note of the change: prj files

Last finish 2021-01-19 → 2021-06-28 (+160d). Complete tasks 0 → 36.

Added:

| ID | Task | Duration | Start | Finish | Predecessors | Constraint | Resources |
| --- | --- | --- | --- | --- | --- | --- | --- |
| 2 | **Backend** | 8.75d? | 2020-12-01 A | 2020-12-14 |  |  |  |
| 3 | Инфраструктура Heroku | 0.25d? | 2020-12-01 A | 2020-12-01 A |  |  | Павел Д. |
| 4 | Инициализация приложения | 0.5d? | 2020-12-01 A | 2020-12-02 A | 3 |  | Павел Д. |
| 5 | Авторизация и регистрация | 1d? | 2020-12-02 A | 2020-12-03 A | 4 |  | Павел Д. |
| 6 | Создание модели user | 0.25d? | 2020-12-03 A | 2020-12-03 A | 5 |  | Павел Д. |
| 7 | Обработка auth_token | 0.38d? | 2020-12-03 A | 2020-12-03 A | 6 |  | Павел Д. |
| 8 | Интеграция с sms центр | 0.5d | 2020-12-03 A | 2020-12-04 A | 7 |  | Павел Д. |
| 9 | Миграция данных для чатбота (Приветствие) | 1d | 2020-12-04 A | 2020-12-07 A | 8 |  | Павел Д. |
| 10 | Миграция данных для чат бота (Питание) | 1d | 2020-12-07 A | 2020-12-08 A | 9 |  | Павел Д. |
| 11 | Миграция данных для чатбота (Про жизнь) | 0.5d? | 2020-12-08 A | 2020-12-08 A | 10 |  | Павел Д. |
| 12 | Миграция данных для чатбота (Активность) | 1.38d? | 2020-12-08 A | 2020-12-10 A | 11 |  | Павел Д. |
| 13 | Фиксы и исправления по чатботу | 1d? | 2020-12-10 A | 2020-12-11 A | 12 |  | Павел Д. |
| 14 | Перенос всех фраз у чатбота и результирующие в базу данных | 1d? | 2020-12-11 | 2020-12-14 | 13 | finish no earlier than 2020-12-02 | Павел Д. |
| 15 | **Frontend** | 12.75d? | 2020-12-11 A | 2020-12-29 | 2 |  |  |
| 29 | **Backend** | 5d? | 2020-12-29 A | 2021-01-05 A |  |  |  |
| 30 | Каталог питания | 1d? | 2020-12-29 A | 2020-12-30 A |  |  | Павел Д. |
| 31 | Заполнение каталога продуктов | 1d? | 2020-12-30 A | 2020-12-31 A | 30 |  | Павел Д. |
| 32 | Создание базы данных иконок, интерфейс запроса иконок | 1d? | 2020-12-31 A | 2021-01-01 A | 31 |  | Павел Д. |
| 33 | Создание роли админа | 1d? | 2021-01-01 A | 2021-01-04 A | 32 |  | Павел Д. |
| 34 | Создание бд условий | 1d? | 2021-01-04 A | 2021-01-05 A | 33 |  | Павел Д. |
| 35 | **Frontend** | 14.5d? | 2021-02-15 | 2021-03-05 | 29 |  |  |
| 44 | **Backend** | 35d? | 2021-01-20 A | 2021-03-10 |  |  |  |
| 45 | Каталог знаний | 1d | 2021-01-20 A | 2021-01-21 A |  |  | Павел Д. |
| 46 | Загрузка файлов на сервер | 1d | 2021-01-21 A | 2021-01-21 A | 45 |  | Павел Д. |
| 47 | Интерфейс добавления статей | 1d | 2021-01-22 A | 2021-01-22 A | 46 |  | Павел Д. |
| 48 | Обновление профиля пользователя | 1d | 2021-01-25 A | 2021-01-26 A | 47 |  | Павел Д. |
| 49 | Сохранение ключевых ответов в профиле пользователя | 1d | 2021-01-26 A | 2021-01-27 A | 48 |  | Павел Д. |
| 50 | Подсчёт уровня здоровья | 1d | 2021-01-27 A | 2021-01-28 A | 49 |  | Павел Д. |
| 51 | Добавление таблиц для учета еды, тренировок, сна | 0.51d | 2021-01-28 A | 2021-01-28 | 50 |  | Павел Д. |
| 52 | Подсчёт нормы калорий | 1d? | 2021-02-02 A | 2021-02-03 A | 51 |  | Павел Д. |
| 53 | Вывод норм и границ для еды в течении дня | 1d? | 2021-02-03 A | 2021-02-04 A | 52 |  | Павел Д. |
| 54 | Календарь тренировок | 1d? | 2021-02-04 A | 2021-02-05 A | 53 |  | Павел Д. |
| 55 | Динамика здоровья | 0.62d | 2021-02-08 A | 2021-02-08 | 54 |  | Павел Д. |
| 56 | Значения для шкалы режима в дашборде | 0.5d? | 2021-03-05 | 2021-03-08 | 55 |  | Павел Д. |
| 57 | Значения для шкалы движения в дашборде | 0.75d? | 2021-03-08 | 2021-03-09 | 56 |  | Павел Д. |
| 58 | Значения для шкалы питания в дашборде | 1d | 2021-03-09 | 2021-03-10 | 57 |  | Павел Д. |
| 59 | Подсказки для дашборда | 0.25d? | 2021-03-10 | 2021-03-10 | 58 |  | Павел Д. |
| 60 | **Frontend** | 11.38d? | 2021-03-10 | 2021-03-25 |  |  |  |
| 62 | **Компонент просмотра конента (каталог знаний)** | 4.75d? | 2021-03-12 | 2021-03-18 | 61 |  |  |
| 63 | Список статей | 0.88d? | 2021-03-12 | 2021-03-15 |  |  | Алексей Д. |
| 64 | Компонент типа новость | 1d? | 2021-03-15 | 2021-03-16 | 63 |  | Алексей Д. |
| 65 | Компонент типа сторис (упрощен объект) | 1.38d? | 2021-03-16 | 2021-03-17 | 64 |  | Алексей Д. |
| 66 | Компонент типа видео | 1.5d? | 2021-03-17 | 2021-03-18 | 65 |  | Алексей Д. |
| 67 | **Результаты анкетирования/профиль** | 4.75d? | 2021-03-19 | 2021-03-25 | 62 |  |  |
| 68 | Верстка/подсадка | 0.88d? | 2021-03-19 | 2021-03-19 | 62 |  | Алексей Д. |
| 69 | Макроцикл | 1d? | 2021-03-19 | 2021-03-22 | 68 |  | Алексей Д. |
| 70 | Мезоцикл | 1.38d? | 2021-03-22 | 2021-03-24 | 69 |  | Алексей Д. |
| 71 | Редактирование профиля | 1d? | 2021-03-24 | 2021-03-25 | 70 |  | Алексей Д. |
| 74 | **Backend** | 9.62d? | 2021-03-10 A | 2021-03-23 |  |  |  |
| 75 | Создание дневного расписания | 0.81d? | 2021-03-10 A | 2021-03-11 | 59 |  | Павел Д. |
| 76 | Создание ночного расписания | 0.12d? | 2021-03-11 | 2021-03-11 | 75 |  | Павел Д. |
| 77 | Update события дня | 0.38d? | 2021-03-11 | 2021-03-11 | 76 |  | Павел Д. |
| 78 | Рекоммендации и подсказки | 0.12d? | 2021-03-11 | 2021-03-11 | 77 |  | Павел Д. |
| 79 | Парсинг таблицы тренировок | 0.12d? | 2021-03-11 | 2021-03-11 | 78 |  | Павел Д. |
| 80 | Каталог тренировок API | 1d? | 2021-03-17 A | 2021-03-19 A | 79 |  | Павел Д. |
| 81 | Трекинг тренировки (пачками) для realtime type traning | 1d? | 2021-03-22 | 2021-03-23 | 80 | start no earlier than 2021-03-22 | Павел Д. |
| 82 | Диапазоны для графиков | 0.12d? | 2021-03-23 | 2021-03-23 | 81 |  | Павел Д. |
| 83 | Трекинг исторических данных для тренировок | 0.5d? | 2021-03-23 | 2021-03-23 | 82 |  | Павел Д. |
| 84 | **Frontend** | 15.12d? | 2021-03-25 | 2021-04-15 | 74 |  |  |
| 104 | **Backend** | 1d? | 2021-03-24 | 2021-03-24 |  |  |  |
| 105 | Хранение данных о курении | 1d? | 2021-03-24 | 2021-03-24 | 83 |  | Павел Д. [50%] |
| 106 | **Frontend** | 7d? | 2021-05-10 | 2021-05-18 |  |  |  |
| 115 | **Backend** | 0.25d? | 2021-03-25 | 2021-03-25 |  |  |  |
| 116 | Сохранение замеров | 0.25d? | 2021-03-25 | 2021-03-25 | 105 |  | Павел Д. |
| 117 | **Frontend** | 14.88d? | 2021-05-19 | 2021-06-08 |  |  |  |
| 128 | **Backend** | 4d? | 2021-03-25 | 2021-03-31 |  |  |  |
| 129 | Интеграционные тесты | 3d? | 2021-03-26 | 2021-03-31 | 130 |  | Павел Д. |
| 130 | Экраны статистики API | 1d? | 2021-03-25 | 2021-03-26 | 116 |  | Павел Д. |
| 131 | **Frontend** | 13.5d | 2021-06-09 | 2021-06-28 |  |  |  |

Removed: 24 Компонент просмотра конента (каталог знаний); 25 - Список статей; 26 - Компонент типа новость; 27 - Компонент типа сторис (упрощен объект); 28 - Компонент типа видео; 29 Результаты анкетирования/профиль 12; 30 - Верстка/подсадка; 31 - Макроцикл; 32 - Мезоцикл; 33 - График компенсации; 34 - Редактирование; 54 Взаимодействие; 55 Доп. правки; 59 Биоритмы; 61 Проверка качества список; 62 Проверка качества просмотр; 63 Проверка качества аналоги; 65 Таблица пищевых добавок (поиск); 66 Просмотр добавки; 70 Создать пост для сторис; 76 Смена заставки (?); 77 Результаты тестирования (?)

Changed:

| ID | Task | Start | Finish | Duration | Complete | Total float | Predecessors | Other |
| --- | --- | --- | --- | --- | --- | --- | --- | --- |
| 1 | **Этап 1. Создание проекта/Авторизация/Чат** | 2021-01-01 → 2020-12-01 A (-31d) | 2021-01-19 → 2020-12-29 (-21d) | 12.75d? → 20.5d? | 0% → 90% | none → 0d |  |  |
| 16 | Создание и настройка проекта | 2021-01-01 → 2020-12-11 A (-21d) | 2021-01-01 → 2020-12-11 A (-21d) | 0.75d → 0.5d? | 0% → 100% |  | none → 2 | resources none → Алексей Д. |
| 17 | Навигация | 2021-01-01 → 2020-12-11 A (-21d) | 2021-01-05 → 2020-12-15 A (-21d) | 1.5d → 1.5d? | 0% → 100% |  | 16 → none | resources none → Алексей Д. |
| 18 | Верстка базовых компонентов | 2021-01-05 → 2020-12-15 A (-21d) | 2021-01-06 → 2020-12-16 A (-21d) | 1.5d → 1.5d? | 0% → 100% |  | 17 → none | resources none → Алексей Д. |
| 19 | Слайдер приветствие | 2021-01-06 → 2020-12-16 A (-21d) | 2021-01-07 → 2020-12-17 A (-21d) | 0.75d → 0.75d? | 0% → 100% |  | 18 → none | resources none → Алексей Д. |
| 20 | Авторизация | 2021-01-07 → 2020-12-17 A (-21d) | 2021-01-08 → 2020-12-18 A (-21d) | 0.75d → 0.75d? | 0% → 100% |  | 19 → none | resources none → Алексей Д. |
| 21 | Подтверждение кода | 2021-01-08 → 2020-12-18 A (-21d) | 2021-01-08 → 2020-12-18 A (-21d) | 0.75d → 0.75d? | 0% → 100% |  | 20 → none | resources none → Алексей Д. |
| 22 | Движок чата | 2021-01-11 → 2020-12-21 A (-21d) | 2021-01-12 → 2020-12-22 A (-21d) | 1.5d → 1.5d? | 0% → 100% |  | 21 → none | resources none → Алексей Д. |
| 23 | Опрос приветствие | 2021-01-12 → 2020-12-22 A (-21d) | 2021-01-13 → 2020-12-23 A (-21d) | 1.12d → 1.12d? | 0% → 100% |  | 22 → none | resources none → Алексей Д. |
| 24 | Опрос по питанию | 2021-01-13 → 2020-12-23 A (-21d) | 2021-01-14 → 2020-12-24 A (-21d) | 1.12d → 1.12d? | 0% → 100% |  | 23 → none | resources none → Алексей Д. |
| 25 | Опрос по образу жизни | 2021-01-14 → 2020-12-24 A (-21d) | 2021-01-15 → 2020-12-25 A (-21d) | 0.75d → 0.75d? | 0% → 100% |  | 24 → none | resources none → Алексей Д. |
| 26 | Опрос по состоянию здоровья | 2021-01-15 → 2020-12-25 A (-21d) | 2021-01-19 → 2020-12-29 (-21d) | 2.25d → 2.25d? | 0% → 50% | none → 0d | 25 → none | resources none → Алексей Д. |
| 28 | **Этап 2. Каталог продуктов** | 2021-01-01 → 2020-12-29 A (-3d) | 2021-01-12 → 2021-03-05 (+52d) | 7.88d? → 48d? | 0% → 29% | none → -32.5d | none → 1 |  |
| 36 | Список категорий | 2021-01-01 → 2021-02-15 (+45d) | 2021-01-01 → 2021-02-17 (+47d) | 1d? → 1.88d? |  | none → -30.12d |  | constraint none → start no earlier than 2021-02-15; resources none → Алексей Д. |
| 37 | Список подкатегорий | 2021-01-01 → 2021-02-17 (+47d) | 2021-01-01 → 2021-02-19 (+49d) | 1d? → 2d? |  | none → -30.12d | none → 36 | resources none → Алексей Д. |
| 38 | Отображение продукта | 2021-01-01 → 2021-02-19 (+49d) | 2021-01-01 → 2021-02-24 (+54d) | 1d? → 2.88d? |  | none → -30.12d | none → 37 | resources none → Алексей Д. |
| 39 | Дашбоард (верстка) | 2021-01-01 → 2021-02-26 (+56d) | 2021-01-01 → 2021-03-01 (+59d) | 1d? → 1.5d? |  | none → -32.5d | none → 38 | constraint none → finish no earlier than 2021-03-01; resources none → Алексей Д. |
| 40 | Фильтрация каталога | 2021-01-01 → 2021-03-02 (+60d) | 2021-01-01 → 2021-03-03 (+61d) | 1d? → 1.88d? |  | none → -32.5d | none → 39 | resources none → Алексей Д. |
| 41 | Поиск по каталогу | 2021-01-01 → 2021-03-03 (+61d) | 2021-01-01 → 2021-03-05 (+63d) | 1d? → 2d? |  | none → -32.5d | none → 40 | resources none → Алексей Д. |
| 43 | **Этап 3. Дашборд/профиль** | 2021-01-01 → 2021-01-20 A (+19d) | 2021-01-12 → 2021-03-25 (+72d) | 7.88d? → 46.38d? | 0% → 41% | none → 9.38d | none → 28 |  |
| 61 | Дашбоард (подсадка) | 2021-01-01 → 2021-03-10 (+68d) | 2021-01-01 → 2021-03-12 (+70d) | 1d? → 1.88d? |  | none → 9.38d | none → 44 | resources none → Алексей Д. |
| 73 | **Этап 4. Режим дня/Движение** | 2021-01-01 → 2021-03-10 A (+68d) | 2021-01-12 → 2021-04-15 (+93d) | 7.88d? → 26.5d? | 0% → 9% | none → 7d |  |  |
| 85 | Режим дня (ночь) | 2021-01-01 → 2021-03-25 (+83d) | 2021-01-01 → 2021-03-29 (+87d) | 1d? → 1.88d? |  | none → 9.38d | none → 71 | resources none → Алексей Д. |
| 86 | Режим дня (день) | 2021-01-01 → 2021-03-30 (+88d) | 2021-01-01 → 2021-04-01 (+90d) | 1d? → 2.38d? |  | none → 9d | none → 85 | constraint none → start no earlier than 2021-03-30; resources none → Алексей Д. |
| 87 | Добавить данные (отметьте тренировку на часах) | 2021-01-01 → 2021-04-02 (+91d) | 2021-01-01 → 2021-04-02 (+91d) |  |  | none → 8.38d | none → 86 | constraint none → start no earlier than 2021-04-02; resources none → Алексей Д. |
| 88 | Добавить тренировку поиск | 2021-01-01 → 2021-04-05 (+94d) | 2021-01-01 → 2021-04-05 (+94d) | 1d? → 0.75d? |  | none → 8.25d | none → 87 | constraint none → start no earlier than 2021-04-05; resources none → Алексей Д. |
| 89 | Добавить тренировку (каталог) | 2021-01-01 → 2021-04-06 (+95d) | 2021-01-01 → 2021-04-07 (+96d) | 1d? → 1.5d? |  | none → 8.12d | none → 88 | constraint none → start no earlier than 2021-04-06; resources none → Алексей Д. |
| 90 | Резутаты после добавления | 2021-01-01 → 2021-04-08 (+97d) | 2021-01-01 → 2021-04-09 (+98d) | 1d? → 1.5d? |  | none → 7.5d | none → 89 | constraint none → start no earlier than 2021-04-08; resources none → Алексей Д. |
| 91 | Каталог тренировок таб | 2021-01-01 → 2021-04-12 (+101d) | 2021-01-01 → 2021-04-13 (+102d) | 1d? → 1.75d? |  | none → 7d | none → 90 | constraint none → start no earlier than 2021-04-12; resources none → Алексей Д. |
| 92 | Просмотр тренировки | 2021-01-01 → 2021-04-13 (+102d) | 2021-01-01 → 2021-04-15 (+104d) | 1d? → 2d? |  | none → 7d | none → 91 | constraint none → start no earlier than 2021-04-13; resources none → Алексей Д. |
| 94 | **Этап 5. Движение 2** | 2021-01-01 → 2021-04-15 (+104d) | 2021-01-12 → 2021-05-07 (+115d) | 7.88d? → 15.62d? |  | none → 4.12d |  |  |
| 95 | Начать тренировку | 2021-01-01 → 2021-04-15 (+104d) | 2021-01-01 → 2021-04-20 (+109d) | 1d? → 2d? |  | none → 7d | none → 92 | resources none → Алексей Д. |
| 96 | Пульсовый график | 2021-01-01 → 2021-04-20 (+109d) | 2021-01-01 → 2021-04-21 (+110d) |  |  | none → 7d | none → 95 | resources none → Алексей Д. |
| 97 | Пульс по зонам интенсивности (считывание пульса) | 2021-01-01 → 2021-04-23 (+112d) | 2021-01-01 → 2021-04-26 (+115d) | 1d? → 1.25d? |  | none → 5.38d | none → 96 | constraint none → start no earlier than 2021-04-23; resources none → Алексей Д. |
| 98 | Экран групп мышц | 2021-01-01 → 2021-04-27 (+116d) | 2021-01-01 → 2021-04-28 (+117d) | 1d? → 2d? |  | none → 4.62d | none → 97 | constraint none → start no earlier than 2021-04-27; resources none → Алексей Д. |
| 99 | Apple Health/Google Fit (health) | 2021-01-01 → 2021-04-29 (+118d) | 2021-01-01 → 2021-04-30 (+119d) |  |  | none → 4.62d | none → 98 | resources none → Алексей Д. |
| 100 | Интеграция с кардиомониторами | 2021-01-01 → 2021-05-03 (+122d) | 2021-01-01 → 2021-05-04 (+123d) | 1d? → 2d? |  | none → 4.12d | none → 99 | constraint none → start no earlier than 2021-05-03; resources none → Алексей Д. |
| 101 | Уведомления Push | 2021-01-01 → 2021-05-05 (+124d) | 2021-01-01 → 2021-05-07 (+126d) | 1d? → 2.5d? |  | none → 4.12d | none → 100 | resources none → Алексей Д. |
| 103 | **Этап 6. Полезные инструменты/Каталог знаний** | 2021-01-01 → 2021-03-24 (+82d) | 2021-01-12 → 2021-05-18 (+126d) | 7.88d? → 40d? |  | none → 24.25d |  |  |
| 107 | Полезные инструменты | 2021-01-01 → 2021-05-10 (+129d) | 2021-01-01 → 2021-05-10 (+129d) | 1d? → 0.75d? |  | none → 3.62d | none → 101 | constraint none → start no earlier than 2021-05-10; resources none → Алексей Д. |
| 108 | Умный будильник | 2021-01-01 → 2021-05-10 (+129d) | 2021-01-01 → 2021-05-12 (+131d) | 1d? → 1.5d? |  | none → 3.62d | none → 107 | resources none → Алексей Д. |
| 109 | Курение | 2021-01-01 → 2021-05-12 (+131d) | 2021-01-01 → 2021-05-14 (+133d) | 1d? → 1.88d? |  | none → 3.62d | none → 108 | resources none → Алексей Д. |
| 110 | Локальные напоминания | 2021-01-01 → 2021-05-14 (+133d) | 2021-01-01 → 2021-05-14 (+133d) | 1d? → 0.12d? |  | none → 3.62d | none → 109 | resources none → Алексей Д. |
| 111 | Список уведомлений | 2021-01-01 → 2021-05-14 (+133d) | 2021-01-01 → 2021-05-17 (+136d) | 1d? → 1.75d? |  | none → 3.62d | none → 110 | resources none → Алексей Д. |
| 112 | Список статей по категориям таб | 2021-01-01 → 2021-05-18 (+137d) | 2021-01-01 → 2021-05-18 (+137d) |  |  | none → 3.62d | none → 111 | resources none → Алексей Д. |
| 114 | **Этап 7. Функционал профиля/Питание** | 2021-01-01 → 2021-03-25 (+83d) | 2021-01-12 → 2021-06-08 (+147d) | 7.88d? → 53.88d? |  | none → 13.62d |  |  |
| 118 | Компонент секций со шкалами и пороговыми значениями (нутриенты продукта) | 2021-01-01 → 2021-05-19 (+138d) | 2021-01-01 → 2021-05-20 (+139d) | 1d? → 1.25d? |  | none → 3.62d | none → 112 | resources none → Алексей Д. |
| 119 | Прием пищи карточка | 2021-01-01 → 2021-05-21 (+140d) | 2021-01-01 → 2021-05-21 (+140d) |  |  | none → 2.88d | none → 118 | constraint none → start no earlier than 2021-05-21; resources none → Алексей Д. |
| 120 | Прием пищи добавление | 2021-01-01 → 2021-05-24 (+143d) | 2021-01-01 → 2021-05-25 (+144d) | 1d? → 1.75d? |  | none → 2.88d | none → 119 | resources none → Алексей Д. |
| 121 | Результаты тестирования | 2021-01-01 → 2021-05-25 (+144d) | 2021-01-01 → 2021-05-27 (+146d) | 1d? → 1.5d? |  | none → 2.88d | none → 120 | was named Избранное (?); constraint none → start no earlier than 2021-05-25; resources none → Алексей Д. |
| 122 | Настройки | 2021-01-01 → 2021-05-28 (+147d) | 2021-01-01 → 2021-05-31 (+150d) | 1d? → 2d? |  | none → 2.12d | none → 121 | was named Настройки 14; constraint none → start no earlier than 2021-05-28; resources none → Алексей Д. |
| 123 | Мои замеры, просмотр прогресса ИМТ, стептеста | 2021-01-01 → 2021-06-01 (+151d) | 2021-01-01 → 2021-06-03 (+153d) | 1d? → 2d? |  | none → 2.12d | none → 122 | resources none → Алексей Д. |
| 124 | Вызов повторного тестирования 1 раз в 2 месяца | 2021-01-01 → 2021-06-03 (+153d) | 2021-01-01 → 2021-06-04 (+154d) | 1d? → 1.38d? |  | none → 2.12d | none → 123 | resources none → Алексей Д. |
| 125 | Компонент календаря | 2021-01-01 → 2021-06-04 (+154d) | 2021-01-01 → 2021-06-08 (+158d) | 1d? → 2d? |  | none → 13.62d | none → 124 | resources none → Алексей Д. |
| 127 | **Этап 8. Статистика (Банк здоровья)** | 2021-01-01 → 2021-03-25 (+83d) | 2021-01-12 → 2021-06-28 (+167d) | 7.88d → 67.25d? |  | none → 0d |  |  |
| 132 | Компонент выбора периода или даты для статистики | 2021-01-01 → 2021-06-09 (+159d) | 2021-01-01 → 2021-06-10 (+160d) | 0.75d → 1.5d |  | none → 0d | none → 124 | constraint none → start no earlier than 2021-06-09; resources none → Алексей Д. |
| 133 | Радиальная шкала недосыпа (вместо трех разных) | 2021-01-01 → 2021-06-10 (+160d) | 2021-01-04 → 2021-06-14 (+161d) | 0.75d → 1.5d |  | none → 0d |  | resources none → Алексей Д. |
| 134 | Радиальная шкала общая | 2021-01-04 → 2021-06-14 (+161d) | 2021-01-05 → 2021-06-15 (+161d) | 0.75d → 1d |  | none → 0d |  | resources none → Алексей Д. |
| 135 | Экран статистики с таб навигацией 13 | 2021-01-05 → 2021-06-15 (+161d) | 2021-01-05 → 2021-06-16 (+162d) | 0.75d → 1.25d |  | none → 0d |  | resources none → Алексей Д. |
| 136 | Таб статистика сон (-радиальная шкала) | 2021-01-06 → 2021-06-16 (+161d) | 2021-01-06 → 2021-06-17 (+162d) | 0.75d → 1.5d |  | none → 0d |  | resources none → Алексей Д. |
| 137 | Таб статистика питание (-радиальная шкала, -горизонтальные шкалы, +употребление воды) | 2021-01-06 → 2021-06-18 (+163d) | 2021-01-07 → 2021-06-21 (+165d) | 1.12d → 1.75d |  | none → 0d |  | resources none → Алексей Д. |
| 138 | Таб статистика активность (-радиальная шкала) | 2021-01-07 → 2021-06-21 (+165d) | 2021-01-08 → 2021-06-23 (+166d) | 0.75d → 1.5d |  | none → 0d |  | resources none → Алексей Д. |
| 139 | Статистика сон период (-календарь, сон за неделю/достаточность сна за неделю) | 2021-01-08 → 2021-06-23 (+166d) | 2021-01-11 → 2021-06-24 (+164d) | 0.75d → 0.88d |  | none → 0d |  | resources none → Алексей Д. |
| 140 | Статистика питание период (-календарь) | 2021-01-11 → 2021-06-24 (+164d) | 2021-01-12 → 2021-06-25 (+164d) | 0.75d → 1d |  | none → 0d |  | resources none → Алексей Д. |
| 141 | Статистика активность период (-календарь) | 2021-01-12 → 2021-06-25 (+164d) | 2021-01-12 → 2021-06-28 (+167d) | 0.75d → 1.38d |  | none → 0d |  | resources none → Алексей Д. |

## Version 3 (saved 2021-03-08, file HLS Development.pod.xml.pod_tmp0.xml)

Note of the change: Merge branch 'master' of git.mobissa.ru:klim/hls_frontend into lex

Last finish 2021-06-28 → 2021-04-06 (-83d). Complete tasks 36 → 0.

Removed: 7 Обработка auth_token; 8 Интеграция с sms центр; 9 Миграция данных для чатбота (Приветствие); 10 Миграция данных для чат бота (Питание); 11 Миграция данных для чатбота (Про жизнь); 12 Миграция данных для чатбота (Активность); 13 Фиксы и исправления по чатботу; 14 Перенос всех фраз у чатбота и результирующие в базу данных; 29 Backend; 30 Каталог питания; 31 Заполнение каталога продуктов; 32 Создание базы данных иконок, интерфейс запроса иконок; 33 Создание роли админа; 34 Создание бд условий; 35 Frontend; 44 Backend; 45 Каталог знаний; 46 Загрузка файлов на сервер; 47 Интерфейс добавления статей; 48 Обновление профиля пользователя; 49 Сохранение ключевых ответов в профиле пользователя; 50 Подсчёт уровня здоровья; 51 Добавление таблиц для учета еды, тренировок, сна; 52 Подсчёт нормы калорий; 53 Вывод норм и границ для еды в течении дня; 54 Календарь тренировок; 55 Динамика здоровья; 56 Значения для шкалы режима в дашборде; 57 Значения для шкалы движения в дашборде; 58 Значения для шкалы питания в дашборде; 59 Подсказки для дашборда; 60 Frontend; 74 Backend; 75 Создание дневного расписания; 76 Создание ночного расписания; 77 Update события дня; 78 Рекоммендации и подсказки; 79 Парсинг таблицы тренировок; 80 Каталог тренировок API; 81 Трекинг тренировки (пачками) для realtime type traning; 82 Диапазоны для графиков; 83 Трекинг исторических данных для тренировок; 84 Frontend; 104 Backend; 105 Хранение данных о курении; 106 Frontend; 115 Backend; 116 Сохранение замеров; 117 Frontend; 128 Backend; 129 Интеграционные тесты; 130 Экраны статистики API; 131 Frontend

Changed:

| ID | Task | Start | Finish | Duration | Complete | Total float | Predecessors | Other |
| --- | --- | --- | --- | --- | --- | --- | --- | --- |
| 1 | **Этап 1. Создание проекта/Авторизация/Чат** | 2020-12-01 A → 2021-01-01 (+31d) | 2020-12-29 → 2021-01-15 (+17d) | 20.5d? → 11d? | 90% → 0% | 0d → none |  |  |
| 2 | **Backend** | 2020-12-01 A → 2021-01-01 (+31d) | 2020-12-14 → 2021-01-01 (+18d) | 8.75d? → 1d? | 89% → 0% | -1d → none |  |  |
| 3 | Инфраструктура Heroku | 2020-12-01 A → 2021-01-01 (+31d) | 2020-12-01 A → 2021-01-01 (+31d) |  | 100% → 0% |  |  | resources Павел Д. → none |
| 4 | Инициализация приложения | 2020-12-01 A → 2021-01-01 (+31d) | 2020-12-02 A → 2021-01-01 (+30d) |  | 100% → 0% |  | 3 → none | resources Павел Д. → none |
| 5 | Авторизация и регистрация | 2020-12-02 A → 2021-01-01 (+30d) | 2020-12-03 A → 2021-01-01 (+29d) |  | 100% → 0% |  | 4 → none | resources Павел Д. → none |
| 6 | Создание модели user | 2020-12-03 A → 2021-01-01 (+29d) | 2020-12-03 A → 2021-01-01 (+29d) | 0.25d? → 1d? | 100% → 0% |  | 5 → none | resources Павел Д. → none |
| 13 | **Frontend** | 2020-12-11 A → 2021-01-01 (+21d) | 2020-12-29 → 2021-01-15 (+17d) | 12.75d? → 11d? | 91% → 0% | 0d → none | 2 → none |  |
| 14 | Создание и настройка проекта | 2020-12-11 A → 2021-01-01 (+21d) | 2020-12-11 A → 2021-01-01 (+21d) | 0.5d? → 1d? | 100% → 0% |  | 2 → none | resources Алексей Д. → none |
| 15 | Навигация | 2020-12-11 A → 2021-01-04 (+24d) | 2020-12-15 A → 2021-01-04 (+20d) | 1.5d? → 1d? | 100% → 0% |  | none → 14 | resources Алексей Д. → none |
| 16 | Верстка базовых компонентов | 2020-12-15 A → 2021-01-05 (+21d) | 2020-12-16 A → 2021-01-05 (+20d) | 1.5d? → 1d? | 100% → 0% |  | none → 15 | resources Алексей Д. → none |
| 17 | Слайдер приветствие | 2020-12-16 A → 2021-01-06 (+21d) | 2020-12-17 A → 2021-01-06 (+20d) | 0.75d? → 1d? | 100% → 0% |  | none → 16 | resources Алексей Д. → none |
| 18 | Авторизация | 2020-12-17 A → 2021-01-07 (+21d) | 2020-12-18 A → 2021-01-07 (+20d) | 0.75d? → 1d? | 100% → 0% |  | none → 17 | resources Алексей Д. → none |
| 19 | Подтверждение кода | 2020-12-18 A → 2021-01-08 (+21d) | 2020-12-18 A → 2021-01-08 (+21d) | 0.75d? → 1d? | 100% → 0% |  | none → 18 | resources Алексей Д. → none |
| 20 | Движок чата | 2020-12-21 A → 2021-01-11 (+21d) | 2020-12-22 A → 2021-01-11 (+20d) | 1.5d? → 1d? | 100% → 0% |  | none → 19 | resources Алексей Д. → none |
| 21 | Опрос приветствие | 2020-12-22 A → 2021-01-12 (+21d) | 2020-12-23 A → 2021-01-12 (+20d) | 1.12d? → 1d? | 100% → 0% |  | none → 20 | resources Алексей Д. → none |
| 22 | Опрос по питанию | 2020-12-23 A → 2021-01-13 (+21d) | 2020-12-24 A → 2021-01-13 (+20d) | 1.12d? → 1d? | 100% → 0% |  | none → 21 | resources Алексей Д. → none |
| 23 | Опрос по образу жизни | 2020-12-24 A → 2021-01-14 (+21d) | 2020-12-25 A → 2021-01-14 (+20d) | 0.75d? → 1d? | 100% → 0% |  | none → 22 | resources Алексей Д. → none |
| 24 | Опрос по состоянию здоровья | 2020-12-25 A → 2021-01-15 (+21d) | 2020-12-29 → 2021-01-15 (+17d) | 2.25d? → 1d? | 50% → 0% | 0d → none | none → 23 | resources Алексей Д. → none |
| 26 | **Этап 2. Каталог продуктов** | 2020-12-29 A → 2021-01-18 (+20d) | 2021-03-05 → 2021-01-28 (-36d) | 48d? → 8.25d? | 29% → 0% | -32.5d → none |  |  |
| 27 | Список категорий | 2021-02-15 → 2021-01-18 (-28d) | 2021-02-17 → 2021-01-19 (-29d) | 1.88d? → 1.12d? |  | -30.12d → none |  | constraint start no earlier than 2021-02-15 → none |
| 28 | Список подкатегорий | 2021-02-17 → 2021-01-19 (-29d) | 2021-02-19 → 2021-01-20 (-30d) | 2d? → 1.12d? |  | -30.12d → none |  |  |
| 29 | Отображение продукта | 2021-02-19 → 2021-01-20 (-30d) | 2021-02-24 → 2021-01-22 (-33d) | 2.88d? → 2.25d? |  | -30.12d → none |  |  |
| 30 | Дашбоард (верстка) | 2021-02-26 → 2021-01-22 (-35d) | 2021-03-01 → 2021-01-25 (-35d) |  |  | -32.5d → none |  | constraint finish no earlier than 2021-03-01 → none |
| 31 | Фильтрация каталога | 2021-03-02 → 2021-01-26 (-35d) | 2021-03-03 → 2021-01-27 (-35d) | 1.88d? → 1.12d? |  | -32.5d → none |  |  |
| 32 | Поиск по каталогу | 2021-03-03 → 2021-01-27 (-35d) | 2021-03-05 → 2021-01-28 (-36d) | 2d? → 1.12d? |  | -32.5d → none |  |  |
| 34 | **Этап 3. Дашборд/профиль** | 2021-01-20 A → 2021-01-28 (+8d) | 2021-03-25 → 2021-02-08 (-45d) | 46.38d? → 7d? | 41% → 0% | 9.38d → none |  |  |
| 35 | Дашбоард (подсадка) | 2021-03-10 → 2021-01-28 (-41d) | 2021-03-12 → 2021-01-29 (-42d) | 1.88d? → 1d? |  | 9.38d → none | Backend → none |  |
| 36 | **Компонент просмотра конента (каталог знаний)** | 2021-03-12 → 2021-01-29 (-42d) | 2021-03-18 → 2021-02-03 (-43d) | 4.75d? → 3d? |  | 9.38d → none |  |  |
| 37 | Список статей | 2021-03-12 → 2021-01-29 (-42d) | 2021-03-15 → 2021-01-29 (-45d) | 0.88d? → 0.75d? |  | 9.38d → none |  |  |
| 38 | Компонент типа новость | 2021-03-15 → 2021-02-01 (-42d) | 2021-03-16 → 2021-02-01 (-43d) | 1d? → 0.75d? |  | 9.38d → none |  |  |
| 39 | Компонент типа сторис (упрощен объект) | 2021-03-16 → 2021-02-01 (-43d) | 2021-03-17 → 2021-02-02 (-43d) | 1.38d? → 0.75d? |  | 9.38d → none |  |  |
| 40 | Компонент типа видео | 2021-03-17 → 2021-02-02 (-43d) | 2021-03-18 → 2021-02-03 (-43d) | 1.5d? → 0.75d? |  | 9.38d → none |  |  |
| 41 | **Результаты анкетирования/профиль** | 2021-03-19 → 2021-02-03 (-44d) | 2021-03-25 → 2021-02-08 (-45d) | 4.75d? → 3d? |  | 9.38d → none |  |  |
| 42 | Верстка/подсадка | 2021-03-19 → 2021-02-03 (-44d) | 2021-03-19 → 2021-02-03 (-44d) | 0.88d? → 0.75d? |  | 9.38d → none | 36 → none |  |
| 43 | Макроцикл | 2021-03-19 → 2021-02-04 (-43d) | 2021-03-22 → 2021-02-04 (-46d) | 1d? → 0.75d? |  | 9.38d → none |  |  |
| 44 | Мезоцикл | 2021-03-22 → 2021-02-04 (-46d) | 2021-03-24 → 2021-02-05 (-47d) | 1.38d? → 0.75d? |  | 9.38d → none |  |  |
| 45 | Редактирование профиля | 2021-03-24 → 2021-02-05 (-47d) | 2021-03-25 → 2021-02-08 (-45d) | 1d? → 0.75d? |  | 9.38d → none |  |  |
| 47 | **Этап 4. Режим дня/Движение** | 2021-03-10 A → 2021-02-08 (-30d) | 2021-04-15 → 2021-02-19 (-55d) | 26.5d? → 9.38d? | 9% → 0% | 7d → none | none → 34 |  |
| 48 | Режим дня (ночь) | 2021-03-25 → 2021-02-08 (-45d) | 2021-03-29 → 2021-02-09 (-48d) | 1.88d? → 1.5d? |  | 9.38d → none | 45 → none |  |
| 49 | Режим дня (день) | 2021-03-30 → 2021-02-09 (-49d) | 2021-04-01 → 2021-02-11 (-49d) | 2.38d? → 2.25d? |  | 9d → none |  | constraint start no earlier than 2021-03-30 → none |
| 50 | Добавить данные (отметьте тренировку на часах) | 2021-04-02 → 2021-02-12 (-49d) | 2021-04-02 → 2021-02-12 (-49d) | 1d? → 0.75d? |  | 8.38d → none |  | constraint start no earlier than 2021-04-02 → none |
| 51 | Добавить тренировку поиск | 2021-04-05 → 2021-02-12 (-52d) | 2021-04-05 → 2021-02-15 (-49d) |  |  | 8.25d → none |  | constraint start no earlier than 2021-04-05 → none |
| 52 | Добавить тренировку (каталог) | 2021-04-06 → 2021-02-15 (-50d) | 2021-04-07 → 2021-02-16 (-50d) | 1.5d? → 1.12d? |  | 8.12d → none |  | constraint start no earlier than 2021-04-06 → none |
| 53 | Резутаты после добавления | 2021-04-08 → 2021-02-16 (-51d) | 2021-04-09 → 2021-02-17 (-51d) | 1.5d? → 0.75d? |  | 7.5d → none |  | constraint start no earlier than 2021-04-08 → none |
| 54 | Каталог тренировок таб | 2021-04-12 → 2021-02-17 (-54d) | 2021-04-13 → 2021-02-18 (-54d) | 1.75d? → 0.75d? |  | 7d → none |  | constraint start no earlier than 2021-04-12 → none |
| 55 | Просмотр тренировки | 2021-04-13 → 2021-02-18 (-54d) | 2021-04-15 → 2021-02-19 (-55d) | 2d? → 1.5d? |  | 7d → none |  | constraint start no earlier than 2021-04-13 → none |
| 57 | **Этап 5. Движение 2** | 2021-04-15 → 2021-02-19 (-55d) | 2021-05-07 → 2021-03-05 (-63d) | 15.62d? → 10.12d? |  | 4.12d → none | none → 47 |  |
| 58 | Начать тренировку | 2021-04-15 → 2021-02-19 (-55d) | 2021-04-20 → 2021-02-23 (-56d) | 2d? → 1.5d? |  | 7d → none | 55 → none |  |
| 59 | Пульсовый график | 2021-04-20 → 2021-02-23 (-56d) | 2021-04-21 → 2021-02-23 (-57d) | 1d? → 0.75d? |  | 7d → none |  |  |
| 60 | Пульс по зонам интенсивности (считывание пульса) | 2021-04-23 → 2021-02-23 (-59d) | 2021-04-26 → 2021-02-24 (-61d) | 1.25d? → 1.12d? |  | 5.38d → none |  | constraint start no earlier than 2021-04-23 → none |
| 61 | Экран групп мышц | 2021-04-27 → 2021-02-25 (-61d) | 2021-04-28 → 2021-02-26 (-61d) | 2d? → 1.5d? |  | 4.62d → none |  | constraint start no earlier than 2021-04-27 → none |
| 62 | Apple Health/Google Fit (health) | 2021-04-29 → 2021-02-26 (-62d) | 2021-04-30 → 2021-03-01 (-60d) | 1d? → 1.5d? |  | 4.62d → none |  |  |
| 63 | Интеграция с кардиомониторами | 2021-05-03 → 2021-03-02 (-62d) | 2021-05-04 → 2021-03-03 (-62d) | 2d? → 1.5d? |  | 4.12d → none |  | constraint start no earlier than 2021-05-03 → none |
| 64 | Уведомления Push | 2021-05-05 → 2021-03-03 (-63d) | 2021-05-07 → 2021-03-05 (-63d) | 2.5d? → 2.25d? |  | 4.12d → none |  |  |
| 66 | **Этап 6. Полезные инструменты/Каталог знаний** | 2021-03-24 → 2021-03-05 (-19d) | 2021-05-18 → 2021-03-11 (-68d) | 40d? → 4.12d? |  | 24.25d → none | none → 57 |  |
| 67 | Полезные инструменты | 2021-05-10 → 2021-03-05 (-66d) | 2021-05-10 → 2021-03-08 (-63d) |  |  | 3.62d → none | 64 → none | constraint start no earlier than 2021-05-10 → none |
| 68 | Умный будильник | 2021-05-10 → 2021-03-08 (-63d) | 2021-05-12 → 2021-03-09 (-64d) | 1.5d? → 0.75d? |  | 3.62d → none |  |  |
| 69 | Курение | 2021-05-12 → 2021-03-09 (-64d) | 2021-05-14 → 2021-03-10 (-65d) | 1.88d? → 1.12d? |  | 3.62d → none |  |  |
| 70 | Локальные напоминания | 2021-05-14 → 2021-03-10 (-65d) | 2021-05-14 → 2021-03-10 (-65d) | 0.12d? → 0d? |  | 3.62d → none |  |  |
| 71 | Список уведомлений | 2021-05-14 → 2021-03-10 (-65d) | 2021-05-17 → 2021-03-11 (-67d) | 1.75d? → 0.75d? |  | 3.62d → none |  |  |
| 72 | Список статей по категориям таб | 2021-05-18 → 2021-03-11 (-68d) | 2021-05-18 → 2021-03-11 (-68d) | 1d? → 0.75d? |  | 3.62d → none |  |  |
| 74 | **Этап 7. Функционал профиля/Питание** | 2021-03-25 → 2021-03-11 (-14d) | 2021-06-08 → 2021-03-25 (-75d) | 53.88d? → 9.75d? |  | 13.62d → none | none → 66 |  |
| 75 | Компонент секций со шкалами и пороговыми значениями (нутриенты продукта) | 2021-05-19 → 2021-03-11 (-69d) | 2021-05-20 → 2021-03-12 (-69d) | 1.25d? → 0.75d? |  | 3.62d → none | 72 → none |  |
| 76 | Прием пищи карточка | 2021-05-21 → 2021-03-12 (-70d) | 2021-05-21 → 2021-03-15 (-67d) | 1d? → 0.75d? |  | 2.88d → none |  | constraint start no earlier than 2021-05-21 → none |
| 77 | Прием пищи добавление | 2021-05-24 → 2021-03-15 (-70d) | 2021-05-25 → 2021-03-16 (-70d) | 1.75d? → 1.12d? |  | 2.88d → none |  |  |
| 78 | Результаты тестирования | 2021-05-25 → 2021-03-16 (-70d) | 2021-05-27 → 2021-03-17 (-71d) |  |  | 2.88d → none |  | constraint start no earlier than 2021-05-25 → none |
| 79 | Настройки | 2021-05-28 → 2021-03-18 (-71d) | 2021-05-31 → 2021-03-19 (-73d) | 2d? → 1.5d? |  | 2.12d → none |  | constraint start no earlier than 2021-05-28 → none |
| 80 | Мои замеры, просмотр прогресса ИМТ, стептеста | 2021-06-01 → 2021-03-19 (-74d) | 2021-06-03 → 2021-03-23 (-72d) | 2d? → 2.25d? |  | 2.12d → none |  |  |
| 81 | Вызов повторного тестирования 1 раз в 2 месяца | 2021-06-03 → 2021-03-23 (-72d) | 2021-06-04 → 2021-03-24 (-72d) | 1.38d? → 0.38d? |  | 2.12d → none |  |  |
| 82 | Компонент календаря | 2021-06-04 → 2021-03-24 (-72d) | 2021-06-08 → 2021-03-25 (-75d) | 2d? → 1.5d? |  | 13.62d → none |  |  |

| ID | Task | Start | Finish | Duration | Total float | Predecessors | Other |
| --- | --- | --- | --- | --- | --- | --- | --- |
| 84 | **Этап 8. Статистика (Банк здоровья)** |  | 2021-06-28 → 2021-04-06 (-83d) | 67.25d? → 7.88d | 0d → none | none → 74 |  |
| 85 | Компонент выбора периода или даты для статистики | 2021-06-09 → 2021-03-25 (-76d) | 2021-06-10 → 2021-03-26 (-76d) | 1.5d → 0.75d | 0d → none | 81 → none | constraint start no earlier than 2021-06-09 → none |
| 86 | Радиальная шкала недосыпа (вместо трех разных) | 2021-06-10 → 2021-03-26 (-76d) | 2021-06-14 → 2021-03-29 (-77d) | 1.5d → 0.75d | 0d → none |  |  |
| 87 | Радиальная шкала общая | 2021-06-14 → 2021-03-29 (-77d) | 2021-06-15 → 2021-03-29 (-78d) | 1d → 0.75d | 0d → none |  |  |
| 88 | Экран статистики с таб навигацией 13 | 2021-06-15 → 2021-03-29 (-78d) | 2021-06-16 → 2021-03-30 (-78d) | 1.25d → 0.75d | 0d → none |  |  |
| 89 | Таб статистика сон (-радиальная шкала) | 2021-06-16 → 2021-03-30 (-78d) | 2021-06-17 → 2021-03-31 (-78d) | 1.5d → 0.75d | 0d → none |  |  |
| 90 | Таб статистика питание (-радиальная шкала, -горизонтальные шкалы, +употребление воды) | 2021-06-18 → 2021-03-31 (-79d) | 2021-06-21 → 2021-04-01 (-81d) | 1.75d → 1.12d | 0d → none |  |  |
| 91 | Таб статистика активность (-радиальная шкала) | 2021-06-21 → 2021-04-01 (-81d) | 2021-06-23 → 2021-04-02 (-82d) | 1.5d → 0.75d | 0d → none |  |  |
| 92 | Статистика сон период (-календарь, сон за неделю/достаточность сна за неделю) | 2021-06-23 → 2021-04-02 (-82d) | 2021-06-24 → 2021-04-02 (-83d) | 0.88d → 0.75d | 0d → none |  |  |
| 93 | Статистика питание период (-календарь) | 2021-06-24 → 2021-04-05 (-80d) | 2021-06-25 → 2021-04-05 (-81d) | 1d → 0.75d | 0d → none |  |  |
| 94 | Статистика активность период (-календарь) | 2021-06-25 → 2021-04-05 (-81d) | 2021-06-28 → 2021-04-06 (-83d) | 1.38d → 0.75d | 0d → none |  |  |

## Version 4 (saved 2021-03-08, file HLS Development.pod.xml.pod)

Note of the change: Merge branch 'master' of git.mobissa.ru:klim/hls_frontend into lex

Last finish stays 2021-04-06.

Removed: 6 Создание модели user

## Version 5 (saved 2021-04-12, file HLS Development.mpp)

Note of the change: merge conflicts

Last finish 2021-04-06 → 2021-06-28 (+83d). Complete tasks 0 → 36.

Added:

| ID | Task | Duration | Start | Finish | Predecessors | Constraint | Resources |
| --- | --- | --- | --- | --- | --- | --- | --- |
| 6 | Создание модели user | 0.25d? | 2020-12-03 A | 2020-12-03 A | 5 |  | Павел Д. |
| 7 | Обработка auth_token | 0.38d? | 2020-12-03 A | 2020-12-03 A | 6 |  | Павел Д. |
| 8 | Интеграция с sms центр | 0.5d | 2020-12-03 A | 2020-12-04 A | 7 |  | Павел Д. |
| 9 | Миграция данных для чатбота (Приветствие) | 1d | 2020-12-04 A | 2020-12-07 A | 8 |  | Павел Д. |
| 10 | Миграция данных для чат бота (Питание) | 1d | 2020-12-07 A | 2020-12-08 A | 9 |  | Павел Д. |
| 11 | Миграция данных для чатбота (Про жизнь) | 0.5d? | 2020-12-08 A | 2020-12-08 A | 10 |  | Павел Д. |
| 12 | Миграция данных для чатбота (Активность) | 1.38d? | 2020-12-08 A | 2020-12-10 A | 11 |  | Павел Д. |
| 13 | Фиксы и исправления по чатботу | 1d? | 2020-12-10 A | 2020-12-11 A | 12 |  | Павел Д. |
| 14 | Перенос всех фраз у чатбота и результирующие в базу данных | 1d? | 2020-12-11 | 2020-12-14 | 13 | finish no earlier than 2020-12-02 | Павел Д. |
| 29 | **Backend** | 5d? | 2020-12-29 A | 2021-01-05 A |  |  |  |
| 30 | Каталог питания | 1d? | 2020-12-29 A | 2020-12-30 A |  |  | Павел Д. |
| 31 | Заполнение каталога продуктов | 1d? | 2020-12-30 A | 2020-12-31 A | 30 |  | Павел Д. |
| 32 | Создание базы данных иконок, интерфейс запроса иконок | 1d? | 2020-12-31 A | 2021-01-01 A | 31 |  | Павел Д. |
| 33 | Создание роли админа | 1d? | 2021-01-01 A | 2021-01-04 A | 32 |  | Павел Д. |
| 34 | Создание бд условий | 1d? | 2021-01-04 A | 2021-01-05 A | 33 |  | Павел Д. |
| 35 | **Frontend** | 14.5d? | 2021-02-15 | 2021-03-05 | 29 |  |  |
| 44 | **Backend** | 35d? | 2021-01-20 A | 2021-03-10 |  |  |  |
| 45 | Каталог знаний | 1d | 2021-01-20 A | 2021-01-21 A |  |  | Павел Д. |
| 46 | Загрузка файлов на сервер | 1d | 2021-01-21 A | 2021-01-21 A | 45 |  | Павел Д. |
| 47 | Интерфейс добавления статей | 1d | 2021-01-22 A | 2021-01-22 A | 46 |  | Павел Д. |
| 48 | Обновление профиля пользователя | 1d | 2021-01-25 A | 2021-01-26 A | 47 |  | Павел Д. |
| 49 | Сохранение ключевых ответов в профиле пользователя | 1d | 2021-01-26 A | 2021-01-27 A | 48 |  | Павел Д. |
| 50 | Подсчёт уровня здоровья | 1d | 2021-01-27 A | 2021-01-28 A | 49 |  | Павел Д. |
| 51 | Добавление таблиц для учета еды, тренировок, сна | 0.51d | 2021-01-28 A | 2021-01-28 | 50 |  | Павел Д. |
| 52 | Подсчёт нормы калорий | 1d? | 2021-02-02 A | 2021-02-03 A | 51 |  | Павел Д. |
| 53 | Вывод норм и границ для еды в течении дня | 1d? | 2021-02-03 A | 2021-02-04 A | 52 |  | Павел Д. |
| 54 | Календарь тренировок | 1d? | 2021-02-04 A | 2021-02-05 A | 53 |  | Павел Д. |
| 55 | Динамика здоровья | 0.62d | 2021-02-08 A | 2021-02-08 | 54 |  | Павел Д. |
| 56 | Значения для шкалы режима в дашборде | 0.5d? | 2021-03-05 | 2021-03-08 | 55 |  | Павел Д. |
| 57 | Значения для шкалы движения в дашборде | 0.75d? | 2021-03-08 | 2021-03-09 | 56 |  | Павел Д. |
| 58 | Значения для шкалы питания в дашборде | 1d | 2021-03-09 | 2021-03-10 | 57 |  | Павел Д. |
| 59 | Подсказки для дашборда | 0.25d? | 2021-03-10 | 2021-03-10 | 58 |  | Павел Д. |
| 60 | **Frontend** | 11.38d? | 2021-03-10 | 2021-03-25 |  |  |  |
| 74 | **Backend** | 9.62d? | 2021-03-10 A | 2021-03-23 |  |  |  |
| 75 | Создание дневного расписания | 0.81d? | 2021-03-10 A | 2021-03-11 | 59 |  | Павел Д. |
| 76 | Создание ночного расписания | 0.12d? | 2021-03-11 | 2021-03-11 | 75 |  | Павел Д. |
| 77 | Update события дня | 0.38d? | 2021-03-11 | 2021-03-11 | 76 |  | Павел Д. |
| 78 | Рекоммендации и подсказки | 0.12d? | 2021-03-11 | 2021-03-11 | 77 |  | Павел Д. |
| 79 | Парсинг таблицы тренировок | 0.12d? | 2021-03-11 | 2021-03-11 | 78 |  | Павел Д. |
| 80 | Каталог тренировок API | 1d? | 2021-03-17 A | 2021-03-19 A | 79 |  | Павел Д. |
| 81 | Трекинг тренировки (пачками) для realtime type traning | 1d? | 2021-03-22 | 2021-03-23 | 80 | start no earlier than 2021-03-22 | Павел Д. |
| 82 | Диапазоны для графиков | 0.12d? | 2021-03-23 | 2021-03-23 | 81 |  | Павел Д. |
| 83 | Трекинг исторических данных для тренировок | 0.5d? | 2021-03-23 | 2021-03-23 | 82 |  | Павел Д. |
| 84 | **Frontend** | 15.12d? | 2021-03-25 | 2021-04-15 | 74 |  |  |
| 104 | **Backend** | 1d? | 2021-03-24 | 2021-03-24 |  |  |  |
| 105 | Хранение данных о курении | 1d? | 2021-03-24 | 2021-03-24 | 83 |  | Павел Д. [50%] |
| 106 | **Frontend** | 7d? | 2021-05-10 | 2021-05-18 |  |  |  |
| 115 | **Backend** | 0.25d? | 2021-03-25 | 2021-03-25 |  |  |  |
| 116 | Сохранение замеров | 0.25d? | 2021-03-25 | 2021-03-25 | 105 |  | Павел Д. |
| 117 | **Frontend** | 14.88d? | 2021-05-19 | 2021-06-08 |  |  |  |
| 128 | **Backend** | 4d? | 2021-03-25 | 2021-03-31 |  |  |  |
| 129 | Интеграционные тесты | 3d? | 2021-03-26 | 2021-03-31 | 130 |  | Павел Д. |
| 130 | Экраны статистики API | 1d? | 2021-03-25 | 2021-03-26 | 116 |  | Павел Д. |
| 131 | **Frontend** | 13.5d | 2021-06-09 | 2021-06-28 |  |  |  |

Changed:

| ID | Task | Start | Finish | Duration | Complete | Total float | Predecessors | Other |
| --- | --- | --- | --- | --- | --- | --- | --- | --- |
| 1 | **Этап 1. Создание проекта/Авторизация/Чат** | 2021-01-01 → 2020-12-01 A (-31d) | 2021-01-15 → 2020-12-29 (-17d) | 11d? → 20.5d? | 0% → 90% | none → 0d |  |  |
| 2 | **Backend** | 2021-01-01 → 2020-12-01 A (-31d) | 2021-01-01 → 2020-12-14 (-18d) | 1d? → 8.75d? | 0% → 89% | none → -1d |  |  |
| 3 | Инфраструктура Heroku | 2021-01-01 → 2020-12-01 A (-31d) | 2021-01-01 → 2020-12-01 A (-31d) |  | 0% → 100% |  |  | resources none → Павел Д. |
| 4 | Инициализация приложения | 2021-01-01 → 2020-12-01 A (-31d) | 2021-01-01 → 2020-12-02 A (-30d) |  | 0% → 100% |  | none → 3 | resources none → Павел Д. |
| 5 | Авторизация и регистрация | 2021-01-01 → 2020-12-02 A (-30d) | 2021-01-01 → 2020-12-03 A (-29d) |  | 0% → 100% |  | none → 4 | resources none → Павел Д. |
| 15 | **Frontend** | 2021-01-01 → 2020-12-11 A (-21d) | 2021-01-15 → 2020-12-29 (-17d) | 11d? → 12.75d? | 0% → 91% | none → 0d | none → 2 |  |
| 16 | Создание и настройка проекта | 2021-01-01 → 2020-12-11 A (-21d) | 2021-01-01 → 2020-12-11 A (-21d) | 1d? → 0.5d? | 0% → 100% |  | none → 2 | resources none → Алексей Д. |
| 17 | Навигация | 2021-01-04 → 2020-12-11 A (-24d) | 2021-01-04 → 2020-12-15 A (-20d) | 1d? → 1.5d? | 0% → 100% |  | 16 → none | resources none → Алексей Д. |
| 18 | Верстка базовых компонентов | 2021-01-05 → 2020-12-15 A (-21d) | 2021-01-05 → 2020-12-16 A (-20d) | 1d? → 1.5d? | 0% → 100% |  | 17 → none | resources none → Алексей Д. |
| 19 | Слайдер приветствие | 2021-01-06 → 2020-12-16 A (-21d) | 2021-01-06 → 2020-12-17 A (-20d) | 1d? → 0.75d? | 0% → 100% |  | 18 → none | resources none → Алексей Д. |
| 20 | Авторизация | 2021-01-07 → 2020-12-17 A (-21d) | 2021-01-07 → 2020-12-18 A (-20d) | 1d? → 0.75d? | 0% → 100% |  | 19 → none | resources none → Алексей Д. |
| 21 | Подтверждение кода | 2021-01-08 → 2020-12-18 A (-21d) | 2021-01-08 → 2020-12-18 A (-21d) | 1d? → 0.75d? | 0% → 100% |  | 20 → none | resources none → Алексей Д. |
| 22 | Движок чата | 2021-01-11 → 2020-12-21 A (-21d) | 2021-01-11 → 2020-12-22 A (-20d) | 1d? → 1.5d? | 0% → 100% |  | 21 → none | resources none → Алексей Д. |
| 23 | Опрос приветствие | 2021-01-12 → 2020-12-22 A (-21d) | 2021-01-12 → 2020-12-23 A (-20d) | 1d? → 1.12d? | 0% → 100% |  | 22 → none | resources none → Алексей Д. |
| 24 | Опрос по питанию | 2021-01-13 → 2020-12-23 A (-21d) | 2021-01-13 → 2020-12-24 A (-20d) | 1d? → 1.12d? | 0% → 100% |  | 23 → none | resources none → Алексей Д. |
| 25 | Опрос по образу жизни | 2021-01-14 → 2020-12-24 A (-21d) | 2021-01-14 → 2020-12-25 A (-20d) | 1d? → 0.75d? | 0% → 100% |  | 24 → none | resources none → Алексей Д. |
| 26 | Опрос по состоянию здоровья | 2021-01-15 → 2020-12-25 A (-21d) | 2021-01-15 → 2020-12-29 (-17d) | 1d? → 2.25d? | 0% → 50% | none → 0d | 25 → none | resources none → Алексей Д. |
| 28 | **Этап 2. Каталог продуктов** | 2021-01-18 → 2020-12-29 A (-20d) | 2021-01-28 → 2021-03-05 (+36d) | 8.25d? → 48d? | 0% → 29% | none → -32.5d |  |  |
| 36 | Список категорий | 2021-01-18 → 2021-02-15 (+28d) | 2021-01-19 → 2021-02-17 (+29d) | 1.12d? → 1.88d? |  | none → -30.12d |  | constraint none → start no earlier than 2021-02-15 |
| 37 | Список подкатегорий | 2021-01-19 → 2021-02-17 (+29d) | 2021-01-20 → 2021-02-19 (+30d) | 1.12d? → 2d? |  | none → -30.12d |  |  |
| 38 | Отображение продукта | 2021-01-20 → 2021-02-19 (+30d) | 2021-01-22 → 2021-02-24 (+33d) | 2.25d? → 2.88d? |  | none → -30.12d |  |  |
| 39 | Дашбоард (верстка) | 2021-01-22 → 2021-02-26 (+35d) | 2021-01-25 → 2021-03-01 (+35d) |  |  | none → -32.5d |  | constraint none → finish no earlier than 2021-03-01 |
| 40 | Фильтрация каталога | 2021-01-26 → 2021-03-02 (+35d) | 2021-01-27 → 2021-03-03 (+35d) | 1.12d? → 1.88d? |  | none → -32.5d |  |  |
| 41 | Поиск по каталогу | 2021-01-27 → 2021-03-03 (+35d) | 2021-01-28 → 2021-03-05 (+36d) | 1.12d? → 2d? |  | none → -32.5d |  |  |
| 43 | **Этап 3. Дашборд/профиль** | 2021-01-28 → 2021-01-20 A (-8d) | 2021-02-08 → 2021-03-25 (+45d) | 7d? → 46.38d? | 0% → 41% | none → 9.38d |  |  |
| 61 | Дашбоард (подсадка) | 2021-01-28 → 2021-03-10 (+41d) | 2021-01-29 → 2021-03-12 (+42d) | 1d? → 1.88d? |  | none → 9.38d | none → 44 |  |
| 62 | **Компонент просмотра конента (каталог знаний)** | 2021-01-29 → 2021-03-12 (+42d) | 2021-02-03 → 2021-03-18 (+43d) | 3d? → 4.75d? |  | none → 9.38d |  |  |
| 63 | Список статей | 2021-01-29 → 2021-03-12 (+42d) | 2021-01-29 → 2021-03-15 (+45d) | 0.75d? → 0.88d? |  | none → 9.38d |  |  |
| 64 | Компонент типа новость | 2021-02-01 → 2021-03-15 (+42d) | 2021-02-01 → 2021-03-16 (+43d) | 0.75d? → 1d? |  | none → 9.38d |  |  |
| 65 | Компонент типа сторис (упрощен объект) | 2021-02-01 → 2021-03-16 (+43d) | 2021-02-02 → 2021-03-17 (+43d) | 0.75d? → 1.38d? |  | none → 9.38d |  |  |
| 66 | Компонент типа видео | 2021-02-02 → 2021-03-17 (+43d) | 2021-02-03 → 2021-03-18 (+43d) | 0.75d? → 1.5d? |  | none → 9.38d |  |  |
| 67 | **Результаты анкетирования/профиль** | 2021-02-03 → 2021-03-19 (+44d) | 2021-02-08 → 2021-03-25 (+45d) | 3d? → 4.75d? |  | none → 9.38d |  |  |
| 68 | Верстка/подсадка | 2021-02-03 → 2021-03-19 (+44d) | 2021-02-03 → 2021-03-19 (+44d) | 0.75d? → 0.88d? |  | none → 9.38d | none → 62 |  |
| 69 | Макроцикл | 2021-02-04 → 2021-03-19 (+43d) | 2021-02-04 → 2021-03-22 (+46d) | 0.75d? → 1d? |  | none → 9.38d |  |  |
| 70 | Мезоцикл | 2021-02-04 → 2021-03-22 (+46d) | 2021-02-05 → 2021-03-24 (+47d) | 0.75d? → 1.38d? |  | none → 9.38d |  |  |
| 71 | Редактирование профиля | 2021-02-05 → 2021-03-24 (+47d) | 2021-02-08 → 2021-03-25 (+45d) | 0.75d? → 1d? |  | none → 9.38d |  |  |
| 73 | **Этап 4. Режим дня/Движение** | 2021-02-08 → 2021-03-10 A (+30d) | 2021-02-19 → 2021-04-15 (+55d) | 9.38d? → 26.5d? | 0% → 9% | none → 7d | 43 → none |  |
| 85 | Режим дня (ночь) | 2021-02-08 → 2021-03-25 (+45d) | 2021-02-09 → 2021-03-29 (+48d) | 1.5d? → 1.88d? |  | none → 9.38d | none → 71 |  |
| 86 | Режим дня (день) | 2021-02-09 → 2021-03-30 (+49d) | 2021-02-11 → 2021-04-01 (+49d) | 2.25d? → 2.38d? |  | none → 9d |  | constraint none → start no earlier than 2021-03-30 |
| 87 | Добавить данные (отметьте тренировку на часах) | 2021-02-12 → 2021-04-02 (+49d) | 2021-02-12 → 2021-04-02 (+49d) | 0.75d? → 1d? |  | none → 8.38d |  | constraint none → start no earlier than 2021-04-02 |
| 88 | Добавить тренировку поиск | 2021-02-12 → 2021-04-05 (+52d) | 2021-02-15 → 2021-04-05 (+49d) |  |  | none → 8.25d |  | constraint none → start no earlier than 2021-04-05 |
| 89 | Добавить тренировку (каталог) | 2021-02-15 → 2021-04-06 (+50d) | 2021-02-16 → 2021-04-07 (+50d) | 1.12d? → 1.5d? |  | none → 8.12d |  | constraint none → start no earlier than 2021-04-06 |
| 90 | Резутаты после добавления | 2021-02-16 → 2021-04-08 (+51d) | 2021-02-17 → 2021-04-09 (+51d) | 0.75d? → 1.5d? |  | none → 7.5d |  | constraint none → start no earlier than 2021-04-08 |
| 91 | Каталог тренировок таб | 2021-02-17 → 2021-04-12 (+54d) | 2021-02-18 → 2021-04-13 (+54d) | 0.75d? → 1.75d? |  | none → 7d |  | constraint none → start no earlier than 2021-04-12 |
| 92 | Просмотр тренировки | 2021-02-18 → 2021-04-13 (+54d) | 2021-02-19 → 2021-04-15 (+55d) | 1.5d? → 2d? |  | none → 7d |  | constraint none → start no earlier than 2021-04-13 |
| 94 | **Этап 5. Движение 2** | 2021-02-19 → 2021-04-15 (+55d) | 2021-03-05 → 2021-05-07 (+63d) | 10.12d? → 15.62d? |  | none → 4.12d | 73 → none |  |
| 95 | Начать тренировку | 2021-02-19 → 2021-04-15 (+55d) | 2021-02-23 → 2021-04-20 (+56d) | 1.5d? → 2d? |  | none → 7d | none → 92 |  |
| 96 | Пульсовый график | 2021-02-23 → 2021-04-20 (+56d) | 2021-02-23 → 2021-04-21 (+57d) | 0.75d? → 1d? |  | none → 7d |  |  |
| 97 | Пульс по зонам интенсивности (считывание пульса) | 2021-02-23 → 2021-04-23 (+59d) | 2021-02-24 → 2021-04-26 (+61d) | 1.12d? → 1.25d? |  | none → 5.38d |  | constraint none → start no earlier than 2021-04-23 |
| 98 | Экран групп мышц | 2021-02-25 → 2021-04-27 (+61d) | 2021-02-26 → 2021-04-28 (+61d) | 1.5d? → 2d? |  | none → 4.62d |  | constraint none → start no earlier than 2021-04-27 |
| 99 | Apple Health/Google Fit (health) | 2021-02-26 → 2021-04-29 (+62d) | 2021-03-01 → 2021-04-30 (+60d) | 1.5d? → 1d? |  | none → 4.62d |  |  |
| 100 | Интеграция с кардиомониторами | 2021-03-02 → 2021-05-03 (+62d) | 2021-03-03 → 2021-05-04 (+62d) | 1.5d? → 2d? |  | none → 4.12d |  | constraint none → start no earlier than 2021-05-03 |
| 101 | Уведомления Push | 2021-03-03 → 2021-05-05 (+63d) | 2021-03-05 → 2021-05-07 (+63d) | 2.25d? → 2.5d? |  | none → 4.12d |  |  |
| 103 | **Этап 6. Полезные инструменты/Каталог знаний** | 2021-03-05 → 2021-03-24 (+19d) | 2021-03-11 → 2021-05-18 (+68d) | 4.12d? → 40d? |  | none → 24.25d | 94 → none |  |
| 107 | Полезные инструменты | 2021-03-05 → 2021-05-10 (+66d) | 2021-03-08 → 2021-05-10 (+63d) |  |  | none → 3.62d | none → 101 | constraint none → start no earlier than 2021-05-10 |
| 108 | Умный будильник | 2021-03-08 → 2021-05-10 (+63d) | 2021-03-09 → 2021-05-12 (+64d) | 0.75d? → 1.5d? |  | none → 3.62d |  |  |
| 109 | Курение | 2021-03-09 → 2021-05-12 (+64d) | 2021-03-10 → 2021-05-14 (+65d) | 1.12d? → 1.88d? |  | none → 3.62d |  |  |
| 110 | Локальные напоминания | 2021-03-10 → 2021-05-14 (+65d) | 2021-03-10 → 2021-05-14 (+65d) | 0d? → 0.12d? |  | none → 3.62d |  |  |
| 111 | Список уведомлений | 2021-03-10 → 2021-05-14 (+65d) | 2021-03-11 → 2021-05-17 (+67d) | 0.75d? → 1.75d? |  | none → 3.62d |  |  |
| 112 | Список статей по категориям таб | 2021-03-11 → 2021-05-18 (+68d) | 2021-03-11 → 2021-05-18 (+68d) | 0.75d? → 1d? |  | none → 3.62d |  |  |
| 114 | **Этап 7. Функционал профиля/Питание** | 2021-03-11 → 2021-03-25 (+14d) | 2021-03-25 → 2021-06-08 (+75d) | 9.75d? → 53.88d? |  | none → 13.62d | 103 → none |  |
| 118 | Компонент секций со шкалами и пороговыми значениями (нутриенты продукта) | 2021-03-11 → 2021-05-19 (+69d) | 2021-03-12 → 2021-05-20 (+69d) | 0.75d? → 1.25d? |  | none → 3.62d | none → 112 |  |
| 119 | Прием пищи карточка | 2021-03-12 → 2021-05-21 (+70d) | 2021-03-15 → 2021-05-21 (+67d) | 0.75d? → 1d? |  | none → 2.88d |  | constraint none → start no earlier than 2021-05-21 |
| 120 | Прием пищи добавление | 2021-03-15 → 2021-05-24 (+70d) | 2021-03-16 → 2021-05-25 (+70d) | 1.12d? → 1.75d? |  | none → 2.88d |  |  |
| 121 | Результаты тестирования | 2021-03-16 → 2021-05-25 (+70d) | 2021-03-17 → 2021-05-27 (+71d) |  |  | none → 2.88d |  | constraint none → start no earlier than 2021-05-25 |
| 122 | Настройки | 2021-03-18 → 2021-05-28 (+71d) | 2021-03-19 → 2021-05-31 (+73d) | 1.5d? → 2d? |  | none → 2.12d |  | constraint none → start no earlier than 2021-05-28 |
| 123 | Мои замеры, просмотр прогресса ИМТ, стептеста | 2021-03-19 → 2021-06-01 (+74d) | 2021-03-23 → 2021-06-03 (+72d) | 2.25d? → 2d? |  | none → 2.12d |  |  |
| 124 | Вызов повторного тестирования 1 раз в 2 месяца | 2021-03-23 → 2021-06-03 (+72d) | 2021-03-24 → 2021-06-04 (+72d) | 0.38d? → 1.38d? |  | none → 2.12d |  |  |
| 125 | Компонент календаря | 2021-03-24 → 2021-06-04 (+72d) | 2021-03-25 → 2021-06-08 (+75d) | 1.5d? → 2d? |  | none → 13.62d |  |  |
| 127 | **Этап 8. Статистика (Банк здоровья)** |  | 2021-04-06 → 2021-06-28 (+83d) | 7.88d → 67.25d? |  | none → 0d | 114 → none |  |

| ID | Task | Start | Finish | Duration | Total float | Predecessors | Other |
| --- | --- | --- | --- | --- | --- | --- | --- |
| 132 | Компонент выбора периода или даты для статистики | 2021-03-25 → 2021-06-09 (+76d) | 2021-03-26 → 2021-06-10 (+76d) | 0.75d → 1.5d | none → 0d | none → 124 | constraint none → start no earlier than 2021-06-09 |
| 133 | Радиальная шкала недосыпа (вместо трех разных) | 2021-03-26 → 2021-06-10 (+76d) | 2021-03-29 → 2021-06-14 (+77d) | 0.75d → 1.5d | none → 0d |  |  |
| 134 | Радиальная шкала общая | 2021-03-29 → 2021-06-14 (+77d) | 2021-03-29 → 2021-06-15 (+78d) | 0.75d → 1d | none → 0d |  |  |
| 135 | Экран статистики с таб навигацией 13 | 2021-03-29 → 2021-06-15 (+78d) | 2021-03-30 → 2021-06-16 (+78d) | 0.75d → 1.25d | none → 0d |  |  |
| 136 | Таб статистика сон (-радиальная шкала) | 2021-03-30 → 2021-06-16 (+78d) | 2021-03-31 → 2021-06-17 (+78d) | 0.75d → 1.5d | none → 0d |  |  |
| 137 | Таб статистика питание (-радиальная шкала, -горизонтальные шкалы, +употребление воды) | 2021-03-31 → 2021-06-18 (+79d) | 2021-04-01 → 2021-06-21 (+81d) | 1.12d → 1.75d | none → 0d |  |  |
| 138 | Таб статистика активность (-радиальная шкала) | 2021-04-01 → 2021-06-21 (+81d) | 2021-04-02 → 2021-06-23 (+82d) | 0.75d → 1.5d | none → 0d |  |  |
| 139 | Статистика сон период (-календарь, сон за неделю/достаточность сна за неделю) | 2021-04-02 → 2021-06-23 (+82d) | 2021-04-02 → 2021-06-24 (+83d) | 0.75d → 0.88d | none → 0d |  |  |
| 140 | Статистика питание период (-календарь) | 2021-04-05 → 2021-06-24 (+80d) | 2021-04-05 → 2021-06-25 (+81d) | 0.75d → 1d | none → 0d |  |  |
| 141 | Статистика активность период (-календарь) | 2021-04-05 → 2021-06-25 (+81d) | 2021-04-06 → 2021-06-28 (+83d) | 0.75d → 1.38d | none → 0d |  |  |
